| id | wbs | name | baselineStart | baselineFinish | baselineDuration | percentComplete | linkedBidItem |
| --- | --- | --- | --- | --- | --- | --- | --- |
| task-1c986cd1 | 1.01 | Notice to Proceed | Mon 11/24/25 | Mon 11/24/25 | 0.8 | 100 | 1.01 |
| task-92a1cb03 | 1.01 | Mobilization | Mon 12/8/25 | Fri 12/12/25 | 4 | 50 | 1.01 |
| task-8c655cc9 | 6.01 | Install Temporary Railroad Crossing | Tue 12/16/25 | Tue 1/6/26 | 12 | 100 | 6.01 |
| task-ef7e8f88 | 1.06 | Install Swamp Mat Access Road | Mon 1/5/26 | Tue 1/6/26 | 1 | 100 | 1.06 |
| task-c7de62f7 | 6.02 | Replace Vault 1 | Tue 1/6/26 | Wed 1/7/26 | 1 | 100 | 6.02 |
| task-cd4820fd | 6.02 | Replace Vault 2 | Wed 1/7/26 | Thu 1/8/26 | 1 | 100 | 6.02 |
| task-0be50da8 | 6.03 | Remove Access Mats and Restore Area | Thu 1/8/26 | Thu 2/12/26 | 20 | 1 | 6.03 |
| task-40a46119 | 6.04 | Transport Material to Spoil Management | Thu 1/8/26 | Thu 2/12/26 | 20 | 0 | 6.04 |
| task-934c130c | 8.01 | Restore Area (East Slope) | Thu 1/8/26 | Thu 2/12/26 | 20 | 0 | 8.01 |
| task-90b25ea5 | 1.05 | Clear and Strip Access Alignment | Fri 12/19/25 | Mon 12/22/25 | 1 | 100 | 1.05 |
| task-2678bb9e | 5.09 | Install Stream Crossing and Pump Around | Thu 1/15/26 | Mon 1/26/26 | 6 | 0 | 5.09 |
| task-e461825a | 5.03 | Drill Sumps SB 9 8 and 7 | Fri 1/16/26 | Mon 1/19/26 | 1 | 0 | 5.03 |
| task-ff988243 | 5.02 | Excavate Trench STA 6+93 to Vault 4 | Mon 1/19/26 | Tue 1/20/26 | 0.5 | 0 | 5.02 |
| task-9ae64171 | 5.05 | Install 4in SDR11 HDPE Pipe | Tue 1/20/26 | Wed 1/21/26 | 1 | 0 | 5.05 |
| task-60efa675 | 5.06 | Backfill with No8 Stone | Wed 1/21/26 | Thu 1/22/26 | 1 | 0 | 5.06 |
| task-1fcf8973 | 5.10 | Set 5x5x4 Vaults | Thu 1/22/26 | Fri 1/23/26 | 1 | 0 | 5.10 |
| task-7a04abc0 | 5.08 | Install GCL Liner | Fri 1/23/26 | Tue 1/27/26 | 1 | 0 | 5.08 |
| task-06819d31 | 5.05 | Install Airline and Water Conveyance Lines | Tue 1/27/26 | Wed 1/28/26 | 1 | 0 | 5.05 |
| task-72f79e5b | 5.07 | Backfill Trench with Native Fill | Wed 1/28/26 | Thu 1/29/26 | 1 | 0 | 5.07 |
| task-7bdf9fc5 | 5.11 | Install Mechanical Components in Vaults | Thu 1/29/26 | Tue 2/3/26 | 2 | 0 | 5.11 |
| task-f98414e9 | 5.12 | Develop Wells | Tue 2/3/26 | Thu 2/19/26 | 10 | 0 | 5.12 |
| task-61aa2fff | 8.01 | Restore Area (Southern Bench) | Thu 1/29/26 | Fri 1/30/26 | 1 | 0 | 8.01 |
| task-3558c2ea | 5.13 | Place Excess Sediment Material | Thu 1/29/26 | Fri 1/30/26 | 0.4 | 0 | 5.13 |
| task-763eedc6 | 5.14 | Transport Material to Spoil Management | Thu 1/29/26 | Fri 1/30/26 | 0.4 | 0 | 5.14 |
| task-4925e626 | 1.05 | Clearing Grubbing and Chipping | Tue 2/3/26 | Wed 2/4/26 | 1 | 50 | 1.05 |
| task-4dc28bb0 | 1.03 | Install Filter Socks and RCE | Wed 2/4/26 | Thu 2/5/26 | 1 | 0 | 1.03 |
| task-d5fba4c4 | 1.06 | Develop Temp Access Road | Thu 2/5/26 | Tue 2/10/26 | 2 | 0 | 1.06 |
| task-fb7bbb16 | 3.01 | Excavate Grade and Backfill Embankment | Tue 2/10/26 | Tue 2/17/26 | 4 | 0 | 3.01 |
| task-86908cf6 | 3.02 | Install 10oz Geotextile | Tue 2/17/26 | Wed 2/18/26 | 1 | 0 | 3.02 |
| task-ff403b01 | 3.03 | Install Rip Rap Aggregate | Wed 2/18/26 | Tue 2/24/26 | 3 | 0 | 3.03 |
| task-46e15ed3 | 8.01 | Restore Area (Roadside Slope) | Tue 2/24/26 | Tue 2/24/26 | 0.4 | 0 | 8.01 |
| task-5ff229b4 | 3.04 | Place Excess Sediment Material | Tue 2/24/26 | Tue 2/24/26 | 0.4 | 0 | 3.04 |
| task-f0b90c36 | 3.05 | Transport Material to Spoil Management | Tue 2/24/26 | Tue 2/24/26 | 0.4 | 0 | 3.05 |
| task-47aca50a | 4.01 | Remove Existing Culvert and Excavate Trench | Tue 2/24/26 | Wed 2/25/26 | 1 | 0 | 4.01 |
| task-23983de9 | 4.03 | Install Headwall(s) | Fri 2/20/26 | Wed 2/25/26 | 1 | 12 | 4.03 |
| task-7644762a | 4.01 | Install 30in Culvert | Wed 2/25/26 | Thu 2/26/26 | 1 | 0 | 4.01 |
| task-a4ede4d8 | 4.02 | Place Geotextile and Rip Rap | Wed 2/25/26 | Thu 2/26/26 | 1 | 0 | 4.02 |
| task-bf66fbb1 | 2.01 | S-2 Ditch Excavate and Grade Channel | Thu 2/26/26 | Fri 2/27/26 | 0.8 | 0 | 2.01 |
| task-2117b154 | 2.05 | S-2 Ditch Install Rip Rap | Fri 2/27/26 | Mon 3/2/26 | 0.8 | 0 | 2.05 |
| task-47a642ab | 2.01 | S-1 Ditch Excavate and Grade Channel | Mon 3/2/26 | Tue 3/3/26 | 1 | 0 | 2.01 |
| task-afa2b81c | 2.05 | S-1 Ditch Install Rip Rap | Tue 3/3/26 | Wed 3/4/26 | 1 | 0 | 2.05 |
| task-0dd559b2 | 2.04 | Deploy ECB on Berm | Wed 3/4/26 | Thu 3/5/26 | 0.4 | 0 | 2.04 |
| task-8eed75bf | 2.02 | Place Native Streambed Material | Mon 3/2/26 | Tue 3/3/26 | 0.8 | 0 | 2.02 |
| task-dd2e9e9a | 2.03 | Install Geotextile | Mon 3/2/26 | Tue 3/3/26 | 0.8 | 0 | 2.03 |
| task-a76928be | 2.06 | Place Excess Sediment Material | Tue 3/3/26 | Wed 3/4/26 | 0.8 | 0 | 2.06 |
| task-1e64bf1d | 2.07 | Transport Material to Spoil Management | Tue 3/3/26 | Wed 3/4/26 | 0.8 | 0 | 2.07 |
| task-3e28b66e | 7.01 | Interim Stockpiling and Dewatering | Mon 3/2/26 | Wed 3/4/26 | 1.6 | 0 | 7.01 |
| task-eb2ce601 | 7.02 | Spread Grade and Compact Material | Wed 3/4/26 | Fri 3/6/26 | 1.6 | 0 | 7.02 |
| task-b9da4b21 | 7.03 | Geosynthetic Clay Liner | Wed 3/4/26 | Thu 3/5/26 | 0.8 | 0 | 7.03 |
| task-80a79a60 | 7.04 | Soils Cover Placement | Fri 3/6/26 | Fri 3/6/26 | 0.4 | 0 | 7.04 |
| task-42739301 | 7.05 | Top Soil Cover Import and Placement | Fri 3/6/26 | Mon 3/9/26 | 0.4 | 0 | 7.05 |
| task-d0fcd17a | 8.02 | Permanent Stabilization | Mon 4/6/26 | Tue 4/7/26 | 1 | 0 | 8.02 |
| task-d1a58966 | 8.03 | Wetland Restoration | Fri 3/6/26 | Tue 3/10/26 | 1 | 0 | 8.03 |
| task-9b8e8efb | 1.01 | Demobilization | Tue 3/10/26 | Thu 3/12/26 | 2 | 0 | 1.01 |
| task-4ad84777 | 1.02 | As-Built Survey | Tue 3/3/26 | Tue 3/10/26 | 4 | 0 | 1.02 |
